# Yokji Jwasari Offshore Windfarm

Schedule from Primavera P6, 2024-01-01 to 2031-09-30, data date 2025-04-11, A marks actual dates.

## Calendars

- RWE 8h / 5d Workweek: Mon-Fri 08:00-12:00, 13:00-17:00; Sat-Sun off.
- RWE Korea 5d: Mon-Fri 08:00-12:00, 13:00-17:00; Sat-Sun off. Exceptions (off unless hours are given): 2025-05-05 to 2025-05-06, 2025-06-03, 2025-06-06, 2025-08-15, 2025-10-03, 2025-10-06 to 2025-10-09, 2025-12-25.
- RWE 12h / 7d: Mon-Sun 06:00-18:00.
- RWE 8h / 7d Workweek: Mon-Sun 08:00-12:00, 13:00-17:00.
- RWE 8h / 6d Workweek: Mon-Sat 08:00-16:00; Sun off.

## Schedule

| ID | WBS | Activity | Type | Duration | Start | Finish | Predecessors | Complete | Planned start | Planned finish | Total float | Free float | Constraint | Calendar | Workstream |
| --- | --- | --- | --- | --- | --- | --- | --- | --- | --- | --- | --- | --- | --- | --- | --- |
|  | 5 | **Milestones** |  |  | 2025-01-13 | 2031-09-30 |  |  |  |  |  |  |  |  |  |
| A10271 |  | Substation Concept Decision | milestone | 0d | 2025-01-13 A | 2025-01-13 A | A10831 FF | 100% | 2024-12-09 | 2024-12-09 |  |  |  |  | ENG |
| A10321 |  | Basic Design Complete | milestone | 0d | 2025-05-30 A | 2025-05-30 A |  | 100% | 2025-04-30 | 2025-04-30 |  |  | finish on or after 2025-04-30 |  | ENG |
| A1140 |  | EIA Final Approval | milestone | 0d | 2025-09-25 | 2025-09-25 | A2900 FF |  |  |  | 1568d |  |  |  | CON |
| A1130 |  | REC Auction Award | milestone | 0d | 2025-12-26 | 2025-12-26 | A2900 FF |  |  |  | 646.5d | 0d | finish on or after 2025-12-26 |  | PFN |
| A10281 |  | Windfarm Layout Ready | milestone | 0d | 2027-09-30 | 2027-09-30 |  |  |  |  | 1044d |  | finish on or after 2027-09-30 |  | WIR |
| A1110 |  | FID | milestone | 0d | 2027-11-30 | 2027-11-30 | A2840 FF |  |  |  | 542d | 87d | finish on or after 2027-11-30 |  | PFN |
| A10861 |  | NTP | milestone | 0d | 2028-03-31 | 2028-03-31 |  |  |  |  | 155.5d | 0d | finish on or after 2028-03-31 |  | PFN |
| A10941 |  | Grid Ready | milestone | 0d | 2030-05-30 | 2030-05-30 | A10951 FF |  |  |  | 348.12d |  | finish on or after 2027-09-30 |  | WIR |
| A1120 |  | COD | milestone | 0d | 2031-09-30 | 2031-09-30 | A11541 FF |  |  |  | 0d |  | finish on or after 2031-09-30 |  | PMT |
|  | 1 | **Pre-Bid** |  |  | 2025-04-11 | 2025-11-21 |  |  |  |  |  |  |  |  |  |
| A11191 |  | Costbook update | milestone | 0d | 2025-04-11 | 2025-04-11 |  |  |  |  | 1677d |  |  | RWE Korea 5d | WIR |
| A11201 |  | 2nd Costbook update | milestone | 0d | 2025-04-11 | 2025-04-11 |  |  |  |  | 1677d |  |  | RWE Korea 5d | WIR |
| A11211 |  | Final Costbook update | milestone | 0d | 2025-04-11 | 2025-04-11 |  |  |  |  | 1677d |  |  | RWE Korea 5d | WIR |
| A11221 |  | Draft Bid Strategy sign-off | milestone | 0d | 2025-05-09 | 2025-05-09 |  |  |  |  | 1658d |  | finish on or after 2025-05-09 | RWE Korea 5d | WIR |
| A11231 |  | Final Bid Strategy sign-off | milestone | 0d | 2025-05-09 | 2025-05-09 |  |  |  |  | 1658d |  | finish on or after 2025-05-09 | RWE Korea 5d | WIR |
| A11241 |  | Final bid price | milestone | 0d | 2025-05-09 | 2025-05-09 |  |  |  |  | 1658d |  | finish on or after 2025-05-09 | RWE Korea 5d | WIR |
| A11171 |  | Business Case 2 | milestone | 0d | 2025-08-07 | 2025-08-07 | A10541 FF |  |  |  | 1596d |  |  | RWE Korea 5d | WIR |
| A11181 |  | Business Case 3 | milestone | 0d | 2025-09-09 | 2025-09-09 | A10521 FF |  |  |  | 1574d |  |  | RWE Korea 5d | WIR |
| A11141 |  | Bid Submission | milestone | 0d | 2025-11-21 | 2025-11-21 | A11081 FF, A11101 (other project) FF |  |  |  | 1526d |  | finish on or after 2024-11-21 | RWE Korea 5d | PFN |
|  | 2 | **Project Management** |  |  | 2024-09-04 | 2025-11-21 |  |  |  |  |  |  |  |  |  |
|  | 1 | **Project Finance** |  |  | 2024-09-04 | 2025-09-09 |  |  |  |  |  |  |  |  |  |
| A10511 |  | FA Selection |  | 58d | 2024-09-04 A | 2024-11-14 A |  | 100% | 2025-09-04 | 2025-12-01 |  |  |  | RWE Korea 5d | PFN |
| A10531 |  | Business Case 1 |  | 35d | 2025-04-11 | 2025-06-02 |  |  |  |  | 1571d | 0d | start on or after 2025-03-10 | RWE Korea 5d | PFN |
| A10591 |  | Capital injection |  | 19d | 2025-04-11 | 2025-05-09 | A10581 FS-18d |  |  |  | 1658d |  |  | RWE Korea 5d | PNT |
| A10541 |  | Business Case 2 |  | 41d | 2025-06-12 | 2025-08-07 | A10531 FS+5d |  |  |  | 1571d | 0d |  | RWE Korea 5d | PFN |
| A10521 |  | Business Case 3 |  | 22d | 2025-08-08 | 2025-09-09 | A10541 |  |  |  | 1571d | 0d | start on or after 2025-07-28 | RWE Korea 5d | PFN |

| ID | WBS | Activity | Type | Duration | Start | Finish | Predecessors | Complete | Remaining | Planned start | Planned finish | Total float | Free float | Constraint | Calendar | Workstream |
| --- | --- | --- | --- | --- | --- | --- | --- | --- | --- | --- | --- | --- | --- | --- | --- | --- |
|  | 2 | **Partnering & Transaction** |  |  | 2025-03-03 | 2025-11-17 |  |  |  |  |  |  |  |  |  |  |
| A10581 |  | SHA Negotiation |  | 206d | 2025-03-03 A | 2025-07-21 A |  | 100% |  | 2025-09-29 | 2026-07-21 |  |  |  | RWE Korea 5d | PNT |
| A11051 |  | Merger clearance by FTC |  | 40d | 2025-07-22 A | 2025-08-05 | A10581 |  | 79d | 2025-09-29 | 2025-11-28 | 1530d | 0d |  | RWE Korea 5d | PNT |
| A11061 |  | SHA Signing | milestone | 0d | 2025-07-22 A | 2025-07-22 A | A10581 FF | 100% |  | 2026-07-21 | 2026-07-21 |  |  |  | RWE Korea 5d | PNT |
| A11071 |  | Paid-in capital | milestone | 0d | 2025-08-05 | 2025-08-05 | A11051 FF |  |  |  |  | 1530d | 0d |  | RWE Korea 5d | PNT |
| A11151 |  | Application for transfer of rights |  | 68d | 2025-08-06 | 2025-11-17 | A11071 |  |  |  |  | 1530d | 0d |  | RWE Korea 5d | PNT |
| A11161 |  | MOTIE Approval | milestone | 0d | 2025-11-17 | 2025-11-17 | A11151 FF |  |  |  |  | 1530d |  |  | RWE Korea 5d | PNT |
|  | 3 | **Bid Management** |  |  | 2025-03-03 | 2025-11-21 |  |  |  |  |  |  |  |  |  |  |
|  | 1 | **BId Group** |  |  | 2025-04-11 | 2025-11-11 |  |  |  |  |  |  |  |  |  |  |
| A11261 |  | JV Bid Group 9 | milestone | 0d | 2025-04-11 | 2025-04-11 |  |  |  |  |  | 1677d |  |  | RWE Korea 5d | PNT |
| A11271 |  | JV Bid Group 6 | milestone | 0d | 2025-04-11 | 2025-04-11 |  |  |  |  |  | 1677d |  |  | RWE Korea 5d | PNT |
| A11281 |  | JV Bid Group 7 | milestone | 0d | 2025-04-11 | 2025-04-11 |  |  |  |  |  | 1677d |  |  | RWE Korea 5d | PNT |
| A11291 |  | JV Bid Group 2 | milestone | 0d | 2025-04-11 | 2025-04-11 |  |  |  |  |  | 1677d |  |  | RWE Korea 5d | PNT |
| A11301 |  | JV Bid Group 3 | milestone | 0d | 2025-04-11 | 2025-04-11 |  |  |  |  |  | 1677d |  |  | RWE Korea 5d | PNT |
| A11311 |  | JV Bid Group 4 | milestone | 0d | 2025-04-11 | 2025-04-11 |  |  |  |  |  | 1677d |  |  | RWE Korea 5d | PNT |
| A11321 |  | JV Bid Group 5 | milestone | 0d | 2025-04-11 | 2025-04-11 |  |  |  |  |  | 1677d |  |  | RWE Korea 5d | PNT |
| A11111 |  | RWE Bid Group (BC3) | milestone | 0d | 2025-09-09 | 2025-09-09 | A10521 FF |  |  |  |  | 1571d | 0d |  | RWE Korea 5d | PNT |
| A11101 |  | JV Bid Group (BC3) | milestone | 0d | 2025-09-12 | 2025-09-12 | A11111 FF+3d |  |  |  |  | 1571d | 45d |  | RWE Korea 5d | PNT |
| A11121 |  | RWE Bid Group (Final) | milestone | 0d | 2025-11-06 | 2025-11-06 | A11091 FF+5d |  |  |  |  | 1534d | 0d |  | RWE Korea 5d | PNT |
| A11131 |  | JV Bid Group (Final) | milestone | 0d | 2025-11-11 | 2025-11-11 | A11121 FF+3d |  |  |  |  | 1534d |  |  | RWE Korea 5d | PNT |
|  | 2 | **Approval Process** |  |  | 2025-10-31 | 2025-11-21 |  |  |  |  |  |  |  |  |  |  |
| A11091 |  | Gate 2 (AG Approval) | milestone | 0d | 2025-10-31 | 2025-10-31 |  |  |  |  |  | 1535d | 0d | finish on or after 2025-10-31 |  | PNT |
| A11081 |  | Bid submission | milestone | 0d | 2025-11-21 | 2025-11-21 | A11101 FF |  |  |  |  | 1527d | 0d | finish on or after 2025-11-21 |  | PNT |
|  | 4 | **Regulatory Affair** |  |  |  |  |  |  |  |  |  |  |  |  |  |  |
|  | 1 | **Clarification with MOTIE/KEA on auction criteria** |  |  |  |  |  |  |  |  |  |  |  |  |  |  |
|  | 2 | **Q2 25 REC auction** |  |  |  |  |  |  |  |  |  |  |  |  |  |  |
|  | 3 | **Q4 25 REC auction** |  |  |  |  |  |  |  |  |  |  |  |  |  |  |
|  | 3 | **Bid Strategy development** |  |  | 2025-03-03 | 2025-10-17 |  |  |  |  |  |  |  |  |  |  |
|  | 1 | **LCR** |  |  | 2025-03-03 | 2025-10-17 |  |  |  |  |  |  |  |  |  |  |
|  | 1 | **PSA with HDEC for EPCI** |  |  | 2025-03-03 | 2025-10-17 |  |  |  |  |  |  |  |  |  |  |
| A11331 |  | Price template alignment |  | 15d | 2025-03-03 A | 2025-03-31 A |  | 100% |  | 2025-05-01 | 2025-05-23 |  |  |  | RWE Korea 5d | PNT |
| A11341 |  | EPCI Term & Condition |  | 40d | 2025-04-01 A | 2025-04-30 | A11331 | 65% | 14d | 2025-04-11 | 2025-06-11 | 1595d | 0d |  | RWE Korea 5d | PNT |
| A11361 |  | Go/NoGo with HDEC |  | 40d | 2025-04-11 | 2025-06-11 |  |  |  |  |  | 1637d |  |  | RWE Korea 5d | PNT |
| A11351 |  | Receive Indicative EPCI price |  | 20d | 2025-05-01 | 2025-05-30 | A11341 |  |  |  |  | 1595d | 0d |  | RWE Korea 5d | PNT |
| A11371 |  | Clarfication & Negotiation on EPCI proposal |  | 48d | 2025-06-02 | 2025-08-08 | A11351 |  |  |  |  | 1595d | 0d |  | RWE Korea 5d | PNT |
| A11381 |  | Finalise EPCI price | milestone | 0d | 2025-08-08 | 2025-08-08 | A11371 |  |  |  |  | 1595d |  |  | RWE Korea 5d | PNT |
| A11391 |  | Sign PSA | milestone | 0d | 2025-10-17 | 2025-10-17 |  |  |  |  |  | 1552d |  | finish on or after 2025-10-17 | RWE Korea 5d | PNT |

| ID | WBS | Activity | Type | Duration | Start | Finish | Predecessors | Total float | Free float | Constraint | Calendar | Workstream |
| --- | --- | --- | --- | --- | --- | --- | --- | --- | --- | --- | --- | --- |
|  | 2 | **PSA with HDEC for Frontier and newbuild WTIV** |  |  | 2025-04-11 | 2025-10-17 |  |  |  |  |  |  |
| A11421 |  | Go/NoGo with HDEC |  | 40d | 2025-04-11 | 2025-06-11 |  | 1637d |  |  | RWE Korea 5d | PNT |
| A11401 |  | Issue RFI | milestone | 0d | 2025-05-09 | 2025-05-09 |  | 1572d | 0d | finish on or after 2025-05-09 | RWE Korea 5d | PNT |
| A11411 |  | Receive quotes |  | 10d | 2025-05-12 | 2025-05-23 | A11401 | 1572d | 0d |  | RWE Korea 5d | PNT |
| A11431 |  | Clarification |  | 24d | 2025-05-26 | 2025-06-30 | A11411 | 1572d | 0d |  | RWE Korea 5d | PNT |
| A11441 |  | Receive updated quotes |  | 14d | 2025-07-01 | 2025-07-18 | A11431 | 1572d | 0d |  | RWE Korea 5d | PNT |
| A11471 |  | Issue RFI for local contents info for bid prep |  | 24d | 2025-07-21 | 2025-08-22 | A11441 | 1572d | 0d |  | RWE Korea 5d | PNT |
| A11481 |  | Receive local contents info for bid prep |  | 14d | 2025-08-25 | 2025-09-11 | A11471 | 1572d |  |  | RWE Korea 5d | PNT |
| A11461 |  | Sign PSA | milestone | 0d | 2025-10-17 | 2025-10-17 |  | 1552d |  | finish on or after 2025-10-17 | RWE Korea 5d | PNT |
|  | 3 | **PSA (or LOI) with SGRE+Doosan** |  |  |  |  |  |  |  |  |  |  |
|  | 4 | **PSA with local suppliers for other PKG (FOU, Cables, Steel)** |  |  |  |  |  |  |  |  |  |  |
|  | 6 | **Public ownership** |  |  |  |  |  |  |  |  |  |  |
|  | 1 | **Paartnership with Genco** |  |  |  |  |  |  |  |  |  |  |
|  | 8 | **Port logistics and O&M** |  |  |  |  |  |  |  |  |  |  |
|  | 1 | **MOA with Genco for O&M** |  |  |  |  |  |  |  |  |  |  |
|  | 2 | **PSA with HDEC for Frontier and newbuild WTIV** |  |  |  |  |  |  |  |  |  |  |
|  | 3 | **PSA with LS/Taihan for CLV** |  |  |  |  |  |  |  |  |  |  |
|  | 4 | **LOI with local suppliers (Drone, ROV, CTV, O&M Port)** |  |  |  |  |  |  |  |  |  |  |
|  | 5 | **MOU with local Uni and training centre** |  |  |  |  |  |  |  |  |  |  |
|  | 7 | **Grid Acceptance** |  |  |  |  |  |  |  |  |  |  |
|  | 1 | **Reactive power performance** |  |  |  |  |  |  |  |  |  |  |
|  | 2 | **LVRT performance** |  |  |  |  |  |  |  |  |  |  |
|  | 5 | **Competitor Analysis** |  |  |  |  |  |  |  |  |  |  |
|  | 9 | **Community acceptance** |  |  |  |  |  |  |  |  |  |  |
|  | 1 | **Regional consultation body** |  |  |  |  |  |  |  |  |  |  |
|  | 2 | **Communication** |  |  |  |  |  |  |  |  |  |  |
|  | 3 | **Cpmpensation** |  |  |  |  |  |  |  |  |  |  |
|  | 4 | **Community investment program** |  |  |  |  |  |  |  |  |  |  |
|  | 5 | **Conflicts management plan** |  |  |  |  |  |  |  |  |  |  |
|  | 6 | **SI Offshore** |  |  | 2026-03-02 | 2026-07-31 |  |  |  |  |  |  |
| A11561 |  | Geotechnical Survey |  | 110d | 2026-03-02 | 2026-07-31 | A1130 | 1130.75d | 0d | start on or after 2026-03-02 |  | CON |

| ID | WBS | Activity | Type | Duration | Start | Finish | Predecessors | Complete | Remaining | Planned start | Planned finish | Total float | Free float | Constraint | Calendar | Workstream | User Text 1 | Person in Charge |
| --- | --- | --- | --- | --- | --- | --- | --- | --- | --- | --- | --- | --- | --- | --- | --- | --- | --- | --- |
|  | 1 | **Permit & Consent** |  |  | 2024-04-01 | 2027-07-16 |  |  |  |  |  |  |  |  |  |  |  |  |
| A10101 |  | Preliminary FDII |  | 200d | 2024-06-03 A | 2026-04-12 |  |  | 367d | 2024-08-28 | 2025-03-15 | 892d | 0d |  | RWE 8h / 7d Workweek | CON |  |  |
| A10091 |  | Preliminary RIA |  | 262d | 2024-07-01 A | 2026-03-13 |  |  | 337d | 2024-08-28 | 2025-05-16 | 922d | 30d |  | RWE 8h / 7d Workweek | CON |  |  |
| A10601 |  | MOTIE approval on EBL transfer |  | 308d | 2024-07-01 A | 2026-02-09 |  | 1% | 305d | 2024-08-28 | 2025-07-01 | 2059d |  | start on or after 2025-03-03 | RWE 8h / 7d Workweek | CON |  |  |
|  | 3 | **MTSA** |  |  | 2024-07-01 | 2026-02-08 |  |  |  |  |  |  |  |  |  |  |  |  |
| A10081 |  | Preliminary MTSA |  | 308d | 2024-07-01 A | 2026-02-08 | A10921 SS | 1% | 304d | 2024-08-28 | 2025-07-01 | 955d | 63d |  | RWE 8h / 7d Workweek | CON |  |  |
| A10921 |  | Marine Traffic Congestion Assessment |  | 308d | 2024-07-01 A | 2025-09-11 |  | 50% | 154d | 2024-08-28 | 2025-07-01 | 955d | 0d |  | RWE 8h / 7d Workweek | CON |  |  |
|  | 2 | **EIA** |  |  | 2024-04-01 | 2027-03-09 |  |  |  |  |  |  |  |  |  |  |  |  |
|  | 2 | **EIA Scoping** |  |  | 2024-04-01 | 2024-06-28 |  |  |  |  |  |  |  |  |  |  |  |  |
| A2820 |  | Prepare preparatory statement for assessment |  | 20d | 2024-04-01 A | 2024-04-30 A |  | 100% |  | 2024-07-09 | 2024-08-05 |  |  |  |  | CON | 2407 | JM |
| A3020 |  | Form and Operate EIA Council |  | 40d | 2024-05-01 A | 2024-06-28 A | A2820 | 100% |  | 2024-08-28 | 2024-10-22 |  |  |  |  | CON | 2407 | JM |
|  | 3 | **EIA Surveys** |  |  | 2024-06-03 | 2025-10-10 |  |  |  |  |  |  |  |  |  |  |  |  |
| A2760 |  | Survey Mobilisation |  | 0d | 2024-06-03 A | 2024-06-03 A | A3020 | 100% |  | 2025-01-01 | 2025-01-01 |  |  | start on or after 2024-06-03 | RWE 8h / 7d Workweek | CON |  |  |
| A2790 |  | Surveys (legal EIA) |  | 262d | 2024-06-04 A | 2025-10-10 | A2760 | 30% | 183d | 2024-08-30 | 2025-05-18 | 997.5d | 0d |  | RWE 8h / 7d Workweek | CON |  |  |
| A10641 |  | Surveys (Autumn) |  | 91.5d | 2024-10-01 A | 2025-07-11 |  |  | 91.5d | 2024-10-01 | 2024-12-31 | 2182d | 0d | start on or after 2024-10-01 | RWE 8h / 7d Workweek | CON |  |  |
| A10651 |  | Surveys (Winter) |  | 90.5d | 2025-07-11 | 2025-10-09 | A10641 |  |  |  |  | 2182d |  |  | RWE 8h / 7d Workweek | CON |  |  |
|  | 4 | **EIA Reports** |  |  | 2024-08-30 | 2025-09-25 |  |  |  |  |  |  |  |  |  |  |  |  |
| A2870 |  | EIA Draft Report from Consultant |  | 60d | 2024-08-30 A | 2024-11-13 A | A2820, A3020, A2790 SS+60d | 100% |  | 2024-08-30 | 2024-11-21 |  |  |  |  | CON |  |  |
| A2880 |  | EIA Draft Report Employer's review |  | 19d | 2024-11-14 A | 2024-11-26 A | A2870 | 100% |  | 2024-11-14 | 2024-12-10 |  |  |  |  | CON |  |  |
| A10001 |  | Submit Draft EIA Report to MOE | milestone | 0d | 2024-11-26 A | 2024-11-26 A | A2880 | 100% |  |  |  |  |  |  |  | CON |  |  |
| A8310 |  | EIA Public Consultation |  | 40d | 2024-12-02 A | 2025-02-28 A | A10001 FS+10d | 100% |  | 2024-09-13 | 2024-11-07 |  |  |  |  | CON |  |  |
| A6610 |  | EIA Final Report from Consultant |  | 30d | 2025-03-03 A | 2025-05-01 A | A8310, A2880 | 100% |  | 2025-04-11 | 2025-05-22 |  |  |  |  | CON |  |  |
| A10911 |  | EIA Final Report Employer's review |  | 15d | 2025-05-02 A | 2025-05-29 | A6610 |  | 35d | 2025-04-11 | 2025-05-01 | 711.5d | 0d |  |  | CON |  |  |
| A2890 |  | Submit Final EIA Report to MOE | milestone | 0d | 2025-05-29 | 2025-05-29 | A10911 FF |  |  |  |  | 711.5d | 0d |  |  | CON |  |  |
| A6690 |  | Additional modification based on MOE Pre-feedback |  | 50d | 2025-05-30 | 2025-08-07 | A2890 |  |  |  |  | 711.5d | 0d |  |  | CON |  |  |
| A3080 |  | MOE Examination of Final EIA Report |  | 35d | 2025-08-08 | 2025-09-25 | A6690, A2890 |  |  |  |  | 711.5d | 0d |  |  | CON |  |  |
| A2900 |  | Final Approval from MOE on EIA Final Report | milestone | 0d | 2025-09-25 | 2025-09-25 | A3080 |  |  |  |  | 711.5d | 0d |  |  | CON |  |  |

| ID | WBS | Activity | Type | Duration | Start | Finish | Predecessors | Remaining | Planned start | Planned finish | Total float | Free float | Constraint | Workstream |
| --- | --- | --- | --- | --- | --- | --- | --- | --- | --- | --- | --- | --- | --- | --- |
|  | 5 | **Post-EIA approval** |  |  | 2026-01-16 | 2027-03-09 |  |  |  |  |  |  |  |  |
| A8350 |  | EIA Consultation on changes |  | 178d | 2026-01-16 | 2026-09-22 | A2900 FS+80d |  |  |  | 1190d | 0d |  | CON |
| A8360 |  | Follow up EIA |  | 120d | 2026-09-23 | 2027-03-09 | A8350 |  |  |  | 1190d |  |  | CON |
|  | 1 | **Onshore Electrical Facility** |  |  | 2024-08-30 | 2026-07-16 |  |  |  |  |  |  |  |  |
| A10151 |  | Draft City Management Plan (Modification) |  | 110d | 2024-08-30 A | 2025-09-11 |  | 110d | 2024-08-30 | 2025-01-30 | 677d | 0d |  | ENG |
| A10191 |  | Investigate Landowners |  | 60d | 2025-08-15 | 2025-11-06 | A10151 FS-20d |  |  |  | 677d | 0d |  | ENG |
| A10161 |  | Formulate City Management Plan |  | 40d | 2025-09-12 | 2025-11-06 | A10151 |  |  |  | 1478d | 0d |  | ENG |
| A10171 |  | Perform administrative procedure |  | 60d | 2025-11-07 | 2026-01-29 | A10161 |  |  |  | 1478d |  |  | ENG |
| A10201 |  | Acquisition of Land Rights |  | 180d | 2025-11-07 | 2026-07-16 | A10191 |  |  |  | 1358d |  |  | ENG |
| A10211 |  | Signing Consent form of use |  | 67d | 2025-11-07 | 2026-02-09 | A10191 |  |  |  | 677d | 0d |  | ENG |
| A10631 |  | Military Management Plan Facility Decision |  | 135d | 2025-12-26 | 2026-07-02 | A1130 |  |  |  | 646.5d | 8.5d |  | ENG |
|  | 14 | **OPPW** |  |  | 2026-04-13 | 2027-04-23 |  |  |  |  |  |  |  |  |
|  | 1 | **OPPW (Detailed)** |  |  | 2026-04-13 | 2026-12-04 |  |  |  |  |  |  |  |  |
| A2610 |  | OPPW (Occupation or Use Permit of Public Waters) |  | 170d | 2026-04-13 | 2026-12-04 | A10081, A10091, A10101, A10631 SS+67.5d |  |  |  | 638d | 0d |  | CON |
|  | 2 | **OPPW Implementation Plan** |  |  | 2026-12-07 | 2027-04-23 |  |  |  |  |  |  |  |  |
| A5270 |  | Approval of the implementation plan for OPPW |  | 100d | 2026-12-07 | 2027-04-23 | A2610 |  |  |  | 638d | 0d |  | CON |
|  | 12 | **Site Development Permit** |  |  | 2026-02-10 | 2026-10-26 |  |  |  |  |  |  |  |  |
| A10341 |  | Prepare Site Development Permit Application |  | 50d | 2026-02-10 | 2026-04-20 | A10211, A10631 SS+10d |  |  |  | 677d | 0d |  | CON |
| A10361 |  | Submit Site Development Permit Application |  | 5d | 2026-04-21 | 2026-04-27 | A10341, A10141 |  |  |  | 677d | 0d |  | CON |
| A10351 |  | Consultation with relevant departments |  | 110d | 2026-04-28 | 2026-09-28 | A10361 |  |  |  | 677d | 0d |  | CON |
| A10371 |  | Site Development Permit Approval |  | 20d | 2026-09-29 | 2026-10-26 | A10351 |  |  |  | 677d | 39d |  | CON |
|  | 15 | **Construction Plan** |  |  | 2027-04-26 | 2027-07-16 |  |  |  |  |  |  |  |  |
| A3010 |  | Finalise Construction Plan |  | 20d | 2027-04-26 | 2027-05-21 | A10371 FS+90d, A5270 |  |  |  | 638d | 0d | as late as possible | CON |
| A10611 |  | Submit Construction Plan | milestone | 0d | 2027-05-21 | 2027-05-21 | A3010 FF |  |  |  | 638d | 0d | as late as possible | CON |
| A10621 |  | Construction Plan consultation with MOTIE |  | 40d | 2027-05-24 | 2027-07-16 | A10611 |  |  |  | 638d | 0d |  | CON |
| A2840 |  | Electricity Facility Construction Plan Approval (before FID - contractor must be procured) | milestone | 0d | 2027-07-16 | 2027-07-16 | A10621 FF |  |  |  | 638d | 96d |  | CON |

| ID | WBS | Activity | Duration | Start | Finish | Predecessors | Complete | Planned start | Planned finish | Total float | Free float | Constraint | Calendar | Workstream | User Text 2 |
| --- | --- | --- | --- | --- | --- | --- | --- | --- | --- | --- | --- | --- | --- | --- | --- |
|  | 3 | **Stakeholder Management** |  | 2024-01-01 | 2026-03-12 |  |  |  |  |  |  |  |  |  |  |
| A10111 |  | Investigate persons entitled | 50d | 2024-01-01 A | 2024-02-29 A |  | 100% | 2024-12-02 | 2025-02-07 |  |  |  |  | STK |  |
| A10121 |  | Public Consultation and settle win-win program | 50d | 2024-01-01 A | 2024-08-23 A | A10111 | 100% | 2024-12-02 | 2025-02-07 |  |  |  |  | STK |  |
| A10131 |  | Negotiation for sigining consent form | 120d | 2025-04-11 | 2025-09-25 | A10121, A10271 |  |  |  | 704d | 0d |  |  | STK |  |
| A10141 |  | Sigining consent form | 120d | 2025-09-26 | 2026-03-12 | A10131 |  |  |  | 704d | 27d |  |  | STK |  |
|  | 7 | **Foundation** |  | 2026-03-02 | 2029-11-01 |  |  |  |  |  |  |  |  |  |  |
|  | 2 | **Procurement and Contract** |  |  |  |  |  |  |  |  |  |  |  |  |  |
|  | 3 | **Design and Engineering** |  | 2026-03-02 | 2027-06-01 |  |  |  |  |  |  |  |  |  |  |
|  | 1 | **Mini-FEED** |  |  |  |  |  |  |  |  |  |  |  |  |  |
|  | 1 | **WTG Foundation** |  |  |  |  |  |  |  |  |  |  |  |  |  |
|  | 2 | **OFS/OSS Foundation** |  |  |  |  |  |  |  |  |  |  |  |  |  |
|  | 2 | **FEED and Detailed Design** |  | 2026-03-02 | 2027-06-01 |  |  |  |  |  |  |  |  |  |  |
| A1157 |  | Foundation ILA 1 | 108.75d | 2026-03-02 | 2026-07-30 | A11561 SS |  |  |  | 1130.75d | 0d |  | RWE Korea 5d | ENG |  |
| A1158 |  | Foundation ILA 2 | 108.75d | 2026-07-30 | 2026-12-30 | A1157 |  |  |  | 1130.75d | 0d |  | RWE Korea 5d | ENG |  |
| A1159 |  | Foundation ILA 3 | 108.75d | 2026-12-30 | 2027-06-01 | A1158 |  |  |  | 1130.75d |  |  | RWE Korea 5d | ENG |  |
|  | 1 | **Manufacturing/Fabrication** |  | 2028-03-31 | 2029-09-29 |  |  |  |  |  |  |  |  |  |  |
| A10381 |  | Foundation Jacket Fabrication | 470d | 2028-03-31 | 2029-09-29 | A10861 |  |  |  | 626d | 236d | start on or after 2027-10-01 | RWE 8h / 6d Workweek | ENG |  |
| A10881 |  | Foundation Pinpile Fabrication | 314d | 2028-03-31 | 2029-03-31 | A10861 |  |  |  | 598d | 0d |  | RWE 8h / 6d Workweek | ENG |  |
|  | 4 | **Transport & Installation** |  | 2029-01-01 | 2029-11-01 |  |  |  |  |  |  |  |  |  |  |
| A10871 |  | Foundation Delivery | 270d | 2029-01-01 | 2029-09-28 | A10381 SS |  |  |  | 732.75d | 90d | start on or after 2029-01-01 | RWE 12h / 7d | TNI |  |
| A10891 |  | Pinpile Installation | 215d | 2029-03-31 | 2029-11-01 | A10881 |  |  |  | 698.08d |  |  | RWE 12h / 7d | TNI |  |
| A10391 |  | Foundation Jacket Installation | 213.67d | 2029-04-01 | 2029-10-31 | A10871 SS |  |  |  | 699.08d |  | start on or after 2029-04-01 | RWE 12h / 7d | TNI |  |
|  | 9 | **Onshore Substation** |  | 2024-10-10 | 2030-05-30 |  |  |  |  |  |  |  |  |  |  |
|  | 2 | **Procurement and Contract** |  |  |  |  |  |  |  |  |  |  |  |  |  |
|  | 3 | **Design and Engineering** |  | 2024-10-10 | 2027-08-31 |  |  |  |  |  |  |  |  |  |  |
| A10831 |  | Decision on Substation option | 47d | 2024-10-10 A | 2025-01-10 A |  | 100% | 2024-10-10 | 2024-12-13 |  |  | start on or after 2024-10-10 |  | ELE | DOHWA |
| A10551 |  | ONS EPC Design | 408d | 2026-02-06 | 2027-08-31 | A1130 FS+30d |  |  |  | 1065d | 0d |  |  | ELE |  |

| ID | WBS | Activity | Duration | Start | Finish | Predecessors | Total float | Free float | Constraint | Calendar | Workstream |
| --- | --- | --- | --- | --- | --- | --- | --- | --- | --- | --- | --- |
|  | 1 | **Manufacturing/Fabrication** |  | 2028-03-31 | 2030-05-30 |  |  |  |  |  |  |
| A10931 |  | Substation Manufacturing including Transformer | 560d | 2028-03-31 | 2030-01-12 | A10861 | 223.62d | 0d |  | RWE 8h / 6d Workweek | ENG |
| A10961 |  | Onshore Substation Installation | 200d | 2029-08-10 | 2030-03-30 | A10931 FS-134d | 418d | 0d |  | RWE 8h / 6d Workweek | ENG |
| A10951 |  | Onshore Substation Commissioning | 52d | 2030-04-01 | 2030-05-30 | A10471 FF, A10961 | 418d | 0d |  | RWE 8h / 6d Workweek | ENG |
|  | 4 | **Transport & Installation** |  |  |  |  |  |  |  |  |  |
|  | 11 | **Offshore Cable** |  | 2026-02-06 | 2030-06-29 |  |  |  |  |  |  |
|  | 2 | **Procurement and Contract** |  |  |  |  |  |  |  |  |  |
|  | 3 | **Design and Engineering** |  | 2026-02-06 | 2026-09-15 |  |  |  |  |  |  |
|  | 1 | **Mini-FEED** |  |  |  |  |  |  |  |  |  |
|  | 2 | **EPC Design** |  | 2026-02-06 | 2026-09-15 |  |  |  |  |  |  |
| A10811 |  | Offshore cable EPC Design | 157.5d | 2026-02-06 | 2026-09-15 | A10551 SS | 1315.5d |  |  |  | ENG |
|  | 1 | **Manufacturing/Fabrication** |  | 2028-03-31 | 2029-07-31 |  |  |  |  |  |  |
| A10421 |  | Offshore Export Cable Manufacturing | 314d | 2028-03-31 | 2029-03-31 | A10861, A1110 FS+1d | 678d | 0d |  | RWE 8h / 6d Workweek | ENG |
| A10441 |  | Offshore IAC Cable Manufacturing | 176d | 2029-01-08 | 2029-07-31 | A1110, A10861 | 523.12d | 0d | start on or after 2029-01-08 | RWE 8h / 6d Workweek | ENG |
|  | 4 | **Transport & Installation** |  | 2029-03-31 | 2030-06-29 |  |  |  |  |  |  |
| A10431 |  | Offshore Export Cable Installation | 121.83d | 2029-03-31 | 2029-07-31 | A10421 | 791.25d |  |  | RWE 12h / 7d | TNI |
| A10451 |  | Offshore IAC Cable Installation 1 | 91.67d | 2029-07-31 | 2029-10-31 | A10441 | 610.42d | 152d |  | RWE 12h / 7d | TNI |
| A11551 |  | Offshore IAC Cable Installation 2 | 89d | 2030-04-01 | 2030-06-29 | A10451 | 458.42d |  | start on or after 2030-04-01 | RWE 12h / 7d | TNI |
|  | 10 | **Onshore Cable** |  | 2028-03-31 | 2029-12-31 |  |  |  |  |  |  |
|  | 2 | **Procurement and Contract** |  |  |  |  |  |  |  |  |  |
|  | 5 | **Design and Engineering** |  |  |  |  |  |  |  |  |  |
|  | 1 | **Mini-FEED** |  |  |  |  |  |  |  |  |  |
|  | 2 | **EPC Design** |  |  |  |  |  |  |  |  |  |
|  | 3 | **Manufacturing/Fabrication** |  | 2028-03-31 | 2029-03-31 |  |  |  |  |  |  |
| A10461 |  | Onshore Export Cable Manufacturing | 314d | 2028-03-31 | 2029-03-31 | A10861, A1110 FS+1d | 546d | 0d |  | RWE 8h / 6d Workweek | ENG |

| ID | WBS | Activity | Type | Duration | Start | Finish | Predecessors | Complete | Planned start | Planned finish | Total float | Free float | Constraint | Calendar | Workstream | RWE - FID Phase Milestones |
| --- | --- | --- | --- | --- | --- | --- | --- | --- | --- | --- | --- | --- | --- | --- | --- | --- |
|  | 4 | **Transport & Installation** |  |  | 2029-03-31 | 2029-12-31 |  |  |  |  |  |  |  |  |  |  |
| A10471 |  | Onshore Export Cable Pulling & Jointing |  | 275d | 2029-03-31 | 2029-12-31 | A10461 |  |  |  | 638d | 150d |  | RWE 12h / 7d | TNI |  |
|  | 12 | **O&M** |  |  | 2028-03-31 | 2029-10-31 |  |  |  |  |  |  |  |  |  |  |
| A11511 |  | O&M Service Base Construction & Permits |  | 420d | 2028-03-31 | 2029-05-25 | A10861 |  |  |  | 335.42d | 0d |  | RWE 12h / 7d | TNI |  |
| A11521 |  | O&M Control Room Installation |  | 159d | 2029-05-25 | 2029-10-31 | A11511 |  |  |  | 335.42d | 0d |  | RWE 12h / 7d | TNI |  |
| A11531 |  | O&M Service Base Ready | milestone | 0d | 2029-10-31 | 2029-10-31 | A11521 FF |  |  |  | 335.42d | 152d |  | RWE 12h / 7d | TNI |  |
|  | 1 | **Package Management** |  |  |  |  |  |  |  |  |  |  |  |  |  |  |
|  | 2 | **Control Room** |  |  |  |  |  |  |  |  |  |  |  |  |  |  |
|  | 3 | **Other Handover** |  |  |  |  |  |  |  |  |  |  |  |  |  |  |
|  | 4 | **Base Construction Contract (General Contractor)** |  |  |  |  |  |  |  |  |  |  |  |  |  |  |
|  | 5 | **Logistics Provider** |  |  |  |  |  |  |  |  |  |  |  |  |  |  |
|  | 6 | **Base Construction** |  |  |  |  |  |  |  |  |  |  |  |  |  |  |
|  | 7 | **Building Permit & Design** |  |  |  |  |  |  |  |  |  |  |  |  |  |  |
|  | 8 | **O&M Building Construction** |  |  |  |  |  |  |  |  |  |  |  |  |  |  |
|  | 9 | **Concept Design** |  |  |  |  |  |  |  |  |  |  |  |  |  |  |
|  | 10 | **Operation and Maintenance Concept** |  |  |  |  |  |  |  |  |  |  |  |  |  |  |
|  | 4 | **WTG** |  |  | 2024-07-01 | 2031-07-31 |  |  |  |  |  |  |  |  |  |  |
|  | 2 | **Design and Engineering** |  |  | 2026-02-27 | 2027-08-31 |  |  |  |  |  |  |  |  |  |  |
| A1080 |  | EWA Negotication |  | 67d | 2026-02-27 | 2026-06-01 | A1050 |  |  |  | 307.5d | 0d |  |  | WTG |  |
| A1090 |  | EWA Execution |  | 326d | 2026-06-02 | 2027-08-31 | A1080 |  |  |  | 307.5d | 152d |  |  | WTG |  |
| A1100 |  | TSA & SMA Negotiation |  | 326d | 2026-06-02 | 2027-08-31 | A1080 |  |  |  | 1065d |  |  |  | WTG |  |
|  | 3 | **Manufacturing & Fabrication** |  |  | 2028-03-31 | 2030-03-30 |  |  |  |  |  |  |  |  |  |  |
| A10401 |  | WTG Manufacturing |  | 626d | 2028-03-31 | 2030-03-30 | A1090, A10501 |  |  |  | 186.62d | 0d | start on or after 2027-07-30 | RWE 8h / 6d Workweek | WTG | WTG |
|  | 1 | **Procurement and Contract** |  |  | 2024-07-01 | 2028-03-31 |  |  |  |  |  |  |  |  |  |  |
| A1070 |  | OE Selection and Contract |  | 20d | 2024-07-01 A | 2024-11-13 A |  | 100% | 2024-08-28 | 2024-09-24 |  |  |  |  | WTG |  |
| A1010 |  | Prepare ITT |  | 111d | 2024-11-14 A | 2025-02-07 A | A1070 | 100% | 2024-08-30 | 2025-01-31 |  |  |  |  | WTG |  |
| A10971 |  | ITT Draft Ready | milestone | 0d | 2025-02-07 A | 2025-02-07 A | A1010 | 100% |  |  |  |  |  |  | WTG |  |
| A10981 |  | ITT Employer's review |  | 24d | 2025-04-11 | 2025-05-14 | A10971 |  |  |  | 307.5d | 0d |  |  | WTG |  |
| A1020 |  | ITT Issue & Return |  | 80d | 2025-05-15 | 2025-09-03 | A10981 |  |  |  | 307.5d | 0d |  |  | WTG |  |
| A1030 |  | Evaluation & Short List (2xOEMs) |  | 1d | 2025-09-04 | 2025-09-04 | A1020 |  |  |  | 307.5d | 0d |  |  | WTG |  |
| A1040 |  | Final OEM selection |  | 35d | 2025-09-05 | 2025-10-23 | A1030 |  |  |  | 307.5d | 0d |  |  | WTG |  |
| A1050 |  | Developing PSA |  | 90d | 2025-10-24 | 2026-02-26 | A1040 |  |  |  | 307.5d | 0d |  |  | WTG |  |
| A11041 |  | Binding Offer |  | 60d | 2025-10-24 | 2026-01-15 | A1040 |  |  |  | 1428d | 30d |  |  | WTG |  |
| A11031 |  | Internal PSA Approval |  | 60d | 2026-02-27 | 2026-05-21 | A11041, A1050 |  |  |  | 1398d | 0d |  |  | WTG |  |
| A10491 |  | WTG PSA | milestone | 0d | 2026-05-21 | 2026-05-21 | A11031 FF, A1130 FF |  |  |  | 1398d |  |  |  | WTG |  |
| A10501 |  | NTP for WTG Manufacturing | milestone | 0d | 2028-03-31 | 2028-03-31 | A10861 FF |  |  |  | 155.5d | 0d |  |  | WTG |  |

| ID | WBS | Activity | Duration | Start | Finish | Predecessors | Total float | Free float | Constraint | Calendar | Workstream | RWE - FID Phase Milestones |
| --- | --- | --- | --- | --- | --- | --- | --- | --- | --- | --- | --- | --- |
|  | 4 | **Transport & Installation** |  | 2029-12-28 | 2031-07-31 |  |  |  |  |  |  |  |
| A10481 |  | WTG Delivery | 190d | 2029-12-28 | 2030-07-06 | A10401 FS-80d | 217.42d | 0d | start on or after 2029-03-01 | RWE 12h / 7d | WTG |  |
| A11491 |  | WTG Pre-assembly | 150d | 2030-03-03 | 2030-07-31 | A10481 SS+65d | 426.75d |  |  | RWE 12h / 7d | TNI | WTG |
| A10411 |  | WTG Installation | 179.67d | 2030-04-01 | 2030-09-27 | A10931, A10481 SS+60d, A11531 | 183.42d | 122d | start on or after 2030-04-01 | RWE 12h / 7d | TNI | WTG |
| A11501 |  | WTG Commissioning and Pre-use inspection | 242.67d | 2030-08-01 | 2031-03-31 | A10411 SS | 61.42d | 0d | start on or after 2030-08-01 | RWE 12h / 7d | TNI |  |
| A11541 |  | WTG Final Test | 121.67d | 2031-03-31 | 2031-07-31 | A11501 | 61.42d |  |  | RWE 12h / 7d | TNI |  |
|  | 5 | **Package HSE Management** |  |  |  |  |  |  |  |  |  |  |
|  | 6 | **Package Quality Management** |  |  |  |  |  |  |  |  |  |  |
|  | 7 | **Commissioning & Energisation** |  |  |  |  |  |  |  |  |  |  |
|  | 8 | **Taking-Over, Close-out & Handover** |  |  |  |  |  |  |  |  |  |  |
|  | 9 | **Operations & Maintenance** |  |  |  |  |  |  |  |  |  |  |
|  | 10 | **Package Management** |  |  |  |  |  |  |  |  |  |  |
|  | 13 | **Logistics** |  |  |  |  |  |  |  |  |  |  |
|  | 1 | **Procurement and Contract** |  |  |  |  |  |  |  |  |  |  |
|  | 2 | **Vessels Overview** |  |  |  |  |  |  |  |  |  |  |
|  | 3 | **Investigations** |  |  |  |  |  |  |  |  |  |  |
|  | 4 | **Offshore Site Management** |  |  |  |  |  |  |  |  |  |  |
|  | 5 | **Base Port** |  |  |  |  |  |  |  |  |  |  |
|  | 6 | **Interim Transportation** |  |  |  |  |  |  |  |  |  |  |
|  | 7 | **Marshalling Harbor** |  |  |  |  |  |  |  |  |  |  |
|  | 8 | **Noise Prognosis Study** |  |  |  |  |  |  |  |  |  |  |
|  | 9 | **Noise Mitigation System** |  |  |  |  |  |  |  |  |  |  |
|  | 10 | **Moise Measurement** |  |  |  |  |  |  |  |  |  |  |

## Activity codes

| Code | Value | Meaning |
| --- | --- | --- |
| Person in Charge | JM | Jinman Cho |
| RWE - FID Phase Milestones | WTG | Installation Wind Turbine Generator Summary |
| Workstream | CON | Permitting & Consents |
| Workstream | ELE | Onshore Electrical |
| Workstream | ENG | Engineering Management |
| Workstream | PFN | Project Finance |
| Workstream | PMT | Project Management |
| Workstream | PNT | Partnering & Transaction |
| Workstream | STK | Stakeholder Management |
| Workstream | TNI | Transport & Installation |
| Workstream | WIR | Wind Resource Team |
| Workstream | WTG | Wind Turbine |

# Yokji Jwasari Offshore Windfarm

Schedule from Primavera P6, 2025-09-12 to 2025-11-21, data date 2024-08-30.

## Calendars

- RWE 8h / 5d Workweek: Mon-Fri 08:00-12:00, 13:00-17:00; Sat-Sun off.

## Schedule

| ID | WBS | Activity | Type | Duration | Start | Finish | Predecessors | Total float | Free float | Constraint |
| --- | --- | --- | --- | --- | --- | --- | --- | --- | --- | --- |
|  | 14 | **Pre-Bid** |  |  |  |  |  |  |  |  |
|  | 13 | **Engineering** |  |  |  |  |  |  |  |  |
|  | 1 | **Basic Design** |  |  |  |  |  |  |  |  |
|  | 2 | **Environmental** |  |  |  |  |  |  |  |  |
|  | 1 | **Wind** |  |  |  |  |  |  |  |  |
|  | 3 | **Metocean Study** |  |  |  |  |  |  |  |  |
|  | 3 | **Survey (Detailed)** |  |  |  |  |  |  |  |  |
|  | 2 | **WTG Area** |  |  |  |  |  |  |  |  |
|  | 3 | **Export Cable Route** |  |  |  |  |  |  |  |  |
|  | 1 | **Report** |  |  |  |  |  |  |  |  |
|  | 1 | **Survey (Preliminary)** |  |  |  |  |  |  |  |  |
|  | 1 | **Report** |  |  |  |  |  |  |  |  |
|  | 5 | **Milestones** |  |  |  |  |  |  |  |  |
|  | 2 | **Project Management** |  |  | 2025-09-12 | 2025-11-21 |  |  |  |  |
|  | 3 | **Bid Management** |  |  | 2025-09-12 | 2025-11-21 |  |  |  |  |
|  | 1 | **BId Group** |  |  | 2025-09-12 | 2025-09-12 |  |  |  |  |
| A11131 |  | RWE Bid Group (BC3) | milestone | 0d | 2025-09-12 | 2025-09-12 | A10521 (other project) FF | 1574d | 0d |  |
|  | 2 | **Approval Process** |  |  | 2025-11-21 | 2025-11-21 |  |  |  |  |
| A11101 |  | Bid submission | milestone | 0d | 2025-11-21 | 2025-11-21 |  | 1527d | 0d | finish on or after 2025-11-21 |
|  | 1 | **Project Finance** |  |  |  |  |  |  |  |  |
|  | 2 | **Partnering & Transaction** |  |  |  |  |  |  |  |  |
|  | 6 | **SI Offshore** |  |  |  |  |  |  |  |  |
|  | 1 | **Permit & Consent** |  |  |  |  |  |  |  |  |
|  | 3 | **MTSA** |  |  |  |  |  |  |  |  |
|  | 2 | **EIA** |  |  |  |  |  |  |  |  |
|  | 2 | **EIA Scoping** |  |  |  |  |  |  |  |  |
|  | 3 | **EIA Surveys** |  |  |  |  |  |  |  |  |
|  | 4 | **EIA Reports** |  |  |  |  |  |  |  |  |
|  | 5 | **Post-EIA approval** |  |  |  |  |  |  |  |  |
|  | 1 | **Onshore Electrical Facility** |  |  |  |  |  |  |  |  |
|  | 14 | **OPPW** |  |  |  |  |  |  |  |  |
|  | 1 | **OPPW (Detailed)** |  |  |  |  |  |  |  |  |
|  | 2 | **OPPW Implementation Plan** |  |  |  |  |  |  |  |  |
|  | 12 | **Site Development Permit** |  |  |  |  |  |  |  |  |
|  | 15 | **Construction Plan** |  |  |  |  |  |  |  |  |
|  | 3 | **Stakeholder Management** |  |  |  |  |  |  |  |  |
|  | 4 | **WTG** |  |  |  |  |  |  |  |  |
|  | 1 | **Procurement and Contract** |  |  |  |  |  |  |  |  |
|  | 2 | **Design and Engineering** |  |  |  |  |  |  |  |  |
|  | 3 | **Manufacturing/Fabrication** |  |  |  |  |  |  |  |  |
|  | 4 | **Transport & Installation** |  |  |  |  |  |  |  |  |
|  | 7 | **Foundation** |  |  |  |  |  |  |  |  |
|  | 2 | **Procurement and Contract** |  |  |  |  |  |  |  |  |
|  | 3 | **Design and Engineering** |  |  |  |  |  |  |  |  |
|  | 1 | **Mini-FEED** |  |  |  |  |  |  |  |  |
|  | 1 | **WTG Foundation** |  |  |  |  |  |  |  |  |
|  | 2 | **OFS/OSS Foundation** |  |  |  |  |  |  |  |  |
|  | 2 | **FEED and Detailed Design** |  |  |  |  |  |  |  |  |
|  | 1 | **Manufacturing/Fabrication** |  |  |  |  |  |  |  |  |
|  | 4 | **Transport & Installation** |  |  |  |  |  |  |  |  |
|  | 8 | **Offshore Substation** |  |  |  |  |  |  |  |  |
|  | 1 | **Mini-FEED** |  |  |  |  |  |  |  |  |
|  | 2 | **EPC Design** |  |  |  |  |  |  |  |  |
|  | 9 | **Onshore Substation** |  |  |  |  |  |  |  |  |
|  | 2 | **Procurement and Contract** |  |  |  |  |  |  |  |  |
|  | 3 | **Design and Engineering** |  |  |  |  |  |  |  |  |
|  | 1 | **Manufacturing/Fabrication** |  |  |  |  |  |  |  |  |
|  | 4 | **Transport & Installation** |  |  |  |  |  |  |  |  |
|  | 11 | **Offshore Cable** |  |  |  |  |  |  |  |  |
|  | 2 | **Procurement and Contract** |  |  |  |  |  |  |  |  |
|  | 3 | **Design and Engineering** |  |  |  |  |  |  |  |  |
|  | 1 | **Mini-FEED** |  |  |  |  |  |  |  |  |
|  | 2 | **EPC Design** |  |  |  |  |  |  |  |  |
|  | 1 | **Manufacturing/Fabrication** |  |  |  |  |  |  |  |  |
|  | 4 | **Transport & Installation** |  |  |  |  |  |  |  |  |
|  | 10 | **Onshore Cable** |  |  |  |  |  |  |  |  |
|  | 2 | **Procurement and Contract** |  |  |  |  |  |  |  |  |
|  | 5 | **Design and Engineering** |  |  |  |  |  |  |  |  |
|  | 1 | **Mini-FEED** |  |  |  |  |  |  |  |  |
|  | 2 | **EPC Design** |  |  |  |  |  |  |  |  |

| WBS | Activity |
| --- | --- |
| 3 | **Manufacturing/Fabrication** |
| 4 | **Transport & Installation** |
| 12 | **O&M** |
